# Children's Gourmet Cookbook

Schedule from MS Project, 2015-07-13 to 2015-12-03, costs in $.
Lucerne Publishing

## Calendars

- Standard: Mon-Fri 08:00-12:00, 13:00-17:00; Sat-Sun off.
- Monday-Wednesday: Mon-Wed 08:00-12:00, 13:00-17:00; Thu-Sun off.

## Resources

| Resource | Rate |
| --- | --- |
| John Evans | 62 |
| Katie Jordan | 48 |
| Robin Wood | 44 |
| William Flash | 55 |
| Carole Poland | 52.5 |
| Printing Service |  |
| Color Setting Services |  |
| Copyeditors |  |

## Schedule

| ID | WBS | Task | Type | Duration | Start | Finish | Predecessors | Total slack | Free slack | Calendar | Resources | Work | Cost |
| --- | --- | --- | --- | --- | --- | --- | --- | --- | --- | --- | --- | --- | --- |
| 1 | 1 | **Acquisition** |  | 25d | 2015-07-13 | 2015-08-14 |  | 0d |  |  |  | 200h | 10,500 |
| 2 | 1.1 | Manuscript received | milestone | 0d | 2015-07-13 | 2015-07-13 |  | 0d |  |  | Carole Poland |  |  |
| 3 | 1.2 | Content edit |  | 25d | 2015-07-13 | 2015-08-14 | 2 | 0d |  |  | Carole Poland | 200h | 10,500 |
| 4 | 1.3 | Handoff to Editorial | milestone | 0d | 2015-08-14 | 2015-08-14 | 3 | 0d |  |  | Carole Poland |  |  |
| 5 | 2 | **Editorial** |  | 30d | 2015-08-17 | 2015-09-25 | 1 | 0d |  |  |  | 240h | 3,520 |
| 6 | 2.1 | Organize manuscript for copyedit |  | 5d | 2015-08-17 | 2015-08-21 |  | 0d |  |  | Robin Wood | 40h | 1,760 |
| 7 | 2.2 | Copyedit |  | 20d | 2015-08-24 | 2015-09-18 | 6 | 0d |  |  | Copyeditors | 160h |  |
| 8 | 2.3 | Copyedit incorp |  | 5d | 2015-09-21 | 2015-09-25 | 7 | 0d |  |  | Robin Wood | 40h | 1,760 |
| 9 | 2.4 | Handoff to Production | milestone | 0d | 2015-09-25 | 2015-09-25 | 8 | 0d |  |  | Robin Wood |  |  |
| 10 | 3 | **Design and Production** |  | 20d | 2015-08-17 | 2015-09-11 | 5SS | 10d |  |  |  | 320h | 16,160 |
| 11 | 3.1 | Cover design |  | 5d | 2015-08-17 | 2015-08-21 |  | 10d | 0d |  | William Flash | 40h | 2,200 |
| 12 | 3.2 | Set pages |  | 10d | 2015-08-24 | 2015-09-04 | 11 | 10d | 0d |  | Robin Wood; Katie Jordan | 160h | 7,360 |
| 13 | 3.3 | Interior illustration design |  | 15d | 2015-08-24 | 2015-09-11 | 12SS | 10d |  |  | William Flash | 120h | 6,600 |
| 14 | 4 | **Pages review** |  | 20d | 2015-09-28 | 2015-10-23 | 10, 5 | 0d |  |  |  | 280h | 14,580 |
| 15 | 4.1 | Proofread and index |  | 10d | 2015-09-28 | 2015-10-09 |  | 0d |  |  | John Evans; Katie Jordan | 160h | 8,800 |
| 16 | 4.2 | Incorporate 1st Pages review |  | 5d | 2015-10-12 | 2015-10-16 | 15 | 0d |  |  | Carole Poland | 40h | 2,100 |
| 17 | 4.3 | Send proofed pages to Production | milestone | 0d | 2015-10-16 | 2015-10-16 | 16 | 0d |  |  | Robin Wood |  |  |
| 18 | 4.4 | Enter page corrections and index |  | 5d | 2015-10-19 | 2015-10-23 | 17 | 0d |  |  | Katie Jordan; Robin Wood | 80h | 3,680 |
| 19 | 5 | **Color prep and printing** |  | 29d | 2015-10-26 | 2015-12-03 | 14 | 0d |  |  |  | 208h | 5,420 |
| 20 | 5.1 | Send to color house |  | 1d | 2015-10-26 | 2015-10-26 |  | 0d |  | Monday-Wednesday | Carole Poland | 8h | 420 |
| 21 | 5.2 | Generate proofs |  | 5d | 2015-10-27 | 2015-11-02 | 20 | 0d |  |  | Color Setting Services | 40h | 5,000 |
| 22 | 5.3 | Print and ship |  | 20d | 2015-11-06 | 2015-12-03 | 21FS+3d | 0d |  |  | Printing Service | 160h |  |
