# Kế hoạch phát triển phần mềm

Schedule from MS Project, 2023-02-27 to 2023-08-04, costs in $, A marks actual dates.

## Calendars

- Standard: Mon-Fri 07:00-11:00, 13:00-17:00; Sat-Sun off. Exceptions (off unless hours are given): 2023-04-29 (Giỗ Tổ Hùng Vương), 2023-04-30 (Thống nhất đất nước), 2023-05-01 (Quốc tế lao động).

## Resources

| Resource | Group | Rate |
| --- | --- | --- |
| Ban quản lý |  | 50 |
| Nguyễn Văn An | Người quản lý dự án | 40 |
| Hoàng Minh Hải | Người phân tích | 35 |
| Võ Trường Giang | Người phân tích | 35 |
| Trần Hồng Hạnh | Người phát triển | 30 |
| Lâm Thanh Sang | Người phát triển | 30 |
| Trương Minh Hảo | Người phát triển | 30 |
| Huỳnh Tấn Phát | Người phát triển | 30 |
| Mai Văn Liêm | Người phát triển | 30 |
| Đoàn Tiến Thuận | Người phát triển | 30 |
| Đỗ Tiến Hoàng | Người phát triển | 30 |
| Nguyễn Thanh Bình | Người kiểm thử | 25 |
| Nguyễn Thành Tuấn | Người kiểm thử | 25 |
| Trần Hoàng Hà | Người kiểm thử | 25 |
| Lê Thanh Thảo | Người kiểm thử | 25 |
| Dương Nhật Nam | Người kiểm thử | 25 |
| Phạm Minh Phương | Người tập huấn | 30 |
| Trương Thành Nhân | Người tập huấn | 30 |
| Mai Diễm Trinh | Người tập huấn | 30 |
| Phan Minh Nhật | Hỗ trợ kỹ thuật | 25 |
| Lương Thùy Trang | Hỗ trợ kỹ thuật | 25 |
| Trần Công Minh | Hỗ trợ kỹ thuật | 25 |
| Nguyễn Thanh Hoài | Hỗ trợ kỹ thuật | 25 |
| Nguyễn Chí Hiếu | Hỗ trợ kỹ thuật | 25 |
| Trần Hoàng Khải | Hỗ trợ kỹ thuật | 25 |

## Schedule

| ID | WBS | Task | Type | Duration | Start | Finish | Predecessors | Complete | Remaining | Total slack | Resources | Work | Actual work | Cost | Actual cost |
| --- | --- | --- | --- | --- | --- | --- | --- | --- | --- | --- | --- | --- | --- | --- | --- |
| 1 | 1 | **Phạm vi** |  | 3.5d | 2023-02-27 A | 2023-03-02 A |  | 100% |  |  |  | 28h | 28h | 1,240 | 1,240 |
| 2 | 1.1 | Xác định phạm vi dự án |  | 4h | 2023-02-27 A | 2023-02-27 A |  | 100% |  |  | Ban quản lý | 4h | 4h | 200 | 200 |
| 3 | 1.2 | Bảo đảm tài trợ dự án |  | 1d | 2023-02-27 A | 2023-02-28 A | 2 | 100% |  |  | Ban quản lý | 8h | 8h | 400 | 400 |
| 4 | 1.3 | Xác định tài nguyên sơ bộ |  | 1d | 2023-02-28 A | 2023-03-01 A | 3 | 100% |  |  | Nguyễn Văn An | 8h | 8h | 320 | 320 |
| 5 | 1.4 | Bảo đảm tài nguyên cốt lõi |  | 1d | 2023-03-01 A | 2023-03-02 A | 4 | 100% |  |  | Nguyễn Văn An | 8h | 8h | 320 | 320 |
| 6 | 1.5 | Phạm vi hoàn thành | milestone | 0d | 2023-03-02 A | 2023-03-02 A | 5 | 100% |  |  |  |  |  |  |  |
| 7 | 2 | **Phân tích/ Yêu cầu phần mềm** |  | 15d | 2023-03-02 A | 2023-03-23 A |  | 100% |  |  |  | 138h | 138h | 5,090 | 5,090 |
| 8 | 2.1 | Tiến hành phân tích nhu cầu |  | 5d | 2023-03-02 A | 2023-03-23 A | 6 | 100% |  |  | Hoàng Minh Hải [50%]; Võ Trường Giang | 40h | 40h | 1,400 | 1,400 |
| 9 | 2.2 | Đặc tả sơ bộ phần mềm |  | 3d | 2023-03-09 A | 2023-03-14 A | 8 | 100% |  |  | Hoàng Minh Hải [50%]; Võ Trường Giang | 36h | 36h | 1,260 | 1,260 |
| 10 | 2.3 | Xây dựng ngân sách sơ bộ |  | 2d | 2023-03-14 A | 2023-03-16 A | 9 | 100% |  |  | Nguyễn Văn An | 16h | 16h | 640 | 640 |
| 11 | 2.4 | Đánh giá đặc tả phần mềm/ngân sách cùng với nhóm |  | 4h | 2023-03-16 A | 2023-03-17 A | 10 | 100% |  |  | Hoàng Minh Hải [50%]; Nguyễn Văn An; Võ Trường Giang | 10h | 10h | 370 | 370 |
| 12 | 2.5 | Kết hợp phản hồi vào đặc tả phần mềm |  | 1d | 2023-03-17 A | 2023-03-20 A | 11 | 100% |  |  | Hoàng Minh Hải [50%]; Võ Trường Giang | 12h | 12h | 420 | 420 |
| 13 | 2.6 | Phát triển tiến trình bàn giao |  | 1d | 2023-03-20 A | 2023-03-21 A | 12 | 100% |  |  | Nguyễn Văn An | 8h | 8h | 320 | 320 |
| 14 | 2.7 | Nhận được sự chấp thuận để tiếp tục (khái niệm, tiến độ thời gian, ngân sách) |  | 4h | 2023-03-21 A | 2023-03-21 A | 13 | 100% |  |  | Ban quản lý; Nguyễn Văn An | 8h | 8h | 360 | 360 |
| 15 | 2.8 | Bảo đảm các tài nguyên cần thiết |  | 1d | 2023-03-21 A | 2023-03-22 A | 14 | 100% |  |  | Nguyễn Văn An | 8h | 8h | 320 | 320 |
| 16 | 2.9 | Phân tích hoàn thành | milestone | 0d | 2023-03-22 A | 2023-03-22 A | 15 | 100% |  |  |  |  |  |  |  |
| 17 | 3 | **Thiết kế** |  | 14.5d | 2023-03-22 A | 2023-04-12 |  | 8% | 13.3d | 0d |  | 236h | 14.4h | 8,340 | 504 |
| 18 | 3.1 | Xem lại đặc tả sơ bộ phần mềm |  | 2d | 2023-03-22 A | 2023-03-24 | 16 | 60% | 0.8d | 0d | Hoàng Minh Hải [50%]; Võ Trường Giang | 24h | 14.4h | 840 | 504 |
| 19 | 3.2 | Phát triển đặc tả chức năng |  | 5d | 2023-03-24 | 2023-03-31 | 18 |  |  | 0d | Hoàng Minh Hải [50%]; Trần Hồng Hạnh; Võ Trường Giang | 100h |  | 3,300 |  |
| 20 | 3.3 | Phát triển nguyên mẫu dựa trên đặc tả chức năng |  | 4d | 2023-03-31 | 2023-04-06 | 19 |  |  | 0d | Hoàng Minh Hải [50%]; Lâm Thanh Sang; Võ Trường Giang | 80h |  | 2,640 |  |
| 21 | 3.4 | Xem lại đặc tả chức năng |  | 2d | 2023-04-06 | 2023-04-10 | 20 |  |  | 0d | Ban quản lý | 16h |  | 800 |  |
| 22 | 3.5 | Kết hợp phản hồi vào đặc tả chức năng |  | 1d | 2023-04-10 | 2023-04-11 | 21 |  |  | 0d | Ban quản lý | 8h |  | 400 |  |
| 23 | 3.6 | Nhận được sự chấp thuận để tiếp tục |  | 4h | 2023-04-11 | 2023-04-12 | 22 |  |  | 0d | Ban quản lý; Nguyễn Văn An | 8h |  | 360 |  |
| 24 | 3.7 | Thiết kế hoàn thành | milestone | 0d | 2023-04-12 | 2023-04-12 | 23 |  |  | 0d |  |  |  |  |  |

| ID | WBS | Task | Type | Duration | Start | Finish | Predecessors | Total slack | Free slack | Resources | Work | Cost |
| --- | --- | --- | --- | --- | --- | --- | --- | --- | --- | --- | --- | --- |
| 25 | 4 | **Phát triển** |  | 21.75d | 2023-04-12 | 2023-05-12 |  | 0d |  |  | 872h | 26,160 |
| 26 | 4.1 | Xem lại đặc tả chức năng |  | 1d | 2023-04-12 | 2023-04-13 | 24 | 0d |  | Trần Hồng Hạnh | 8h | 240 |
| 27 | 4.2 | Xác định các thông số thiết kế mô-đun / phân cấp |  | 1d | 2023-04-13 | 2023-04-14 | 26 | 0d |  | Lâm Thanh Sang | 8h | 240 |
| 28 | 4.3 | Chỉ định nhân viên phát triển |  | 1d | 2023-04-14 | 2023-04-17 | 27 | 0d |  | Lâm Thanh Sang; Trần Hồng Hạnh | 16h | 480 |
| 29 | 4.4 | Phát triển mã nguồn |  | 15d | 2023-04-17 | 2023-05-09 | 28 | 0d |  | Đỗ Tiến Hoàng; Huỳnh Tấn Phát; Lâm Thanh Sang | 360h | 10,800 |
| 30 | 4.5 | Kiểm thử của người phát triển (gỡ lỗi chính) |  | 15d | 2023-04-20 | 2023-05-12 | 29FS-11.25d | 18.12d | 0d | Đoàn Tiến Thuận; Mai Văn Liêm; Trần Hồng Hạnh; Trương Minh Hảo | 480h | 14,400 |
| 31 | 4.6 | Phát triển hoàn thành | milestone | 0d | 2023-05-12 | 2023-05-12 | 30 | 18.12d | 0d |  |  |  |
| 32 | 5 | **Kiểm thử** |  | 48.75d | 2023-04-12 | 2023-06-20 |  | 33.12d |  |  | 496h | 12,400 |
| 33 | 5.1 | Xây dựng kế hoạch kiểm thử đơn vị bằng cách sử dụng đặc tả sản phẩm |  | 4d | 2023-04-12 | 2023-04-18 | 24 | 35.88d | 17.75d | Nguyễn Thanh Bình | 32h | 800 |
| 34 | 5.2 | Phát triển kế hoạch kiểm thử tích hợp bằng cách sử dụng đặc tả của sản phẩm |  | 4d | 2023-04-12 | 2023-04-18 | 24 | 77.88d |  | Nguyễn Thành Tuấn | 32h | 800 |
| 35 | 5.3 | **Kiểm thử đơn vị** |  | 15d | 2023-05-12 | 2023-06-02 |  | 18.12d |  |  | 240h | 6,000 |
| 36 | 5.3.1 | Xem lại mã mô-đun |  | 5d | 2023-05-12 | 2023-05-19 | 33, 31 | 18.12d | 0d | Nguyễn Thanh Bình; Trần Hoàng Hà | 80h | 2,000 |
| 37 | 5.3.2 | Kiểm thử các mô-đun thành phần đối với đặc tả sản phẩm |  | 2d | 2023-05-19 | 2023-05-23 | 31, 36 | 18.12d | 0d | Lê Thanh Thảo; Trần Hoàng Hà | 32h | 800 |
| 38 | 5.3.3 | Xác định các điểm bất thường đối với đặc tả sản phẩm |  | 3d | 2023-05-23 | 2023-05-26 | 37 | 18.12d | 0d | Lê Thanh Thảo; Trần Hoàng Hà | 48h | 1,200 |
| 39 | 5.3.4 | Sửa đổi mã nguồn |  | 3d | 2023-05-26 | 2023-05-31 | 38 | 18.12d | 0d | Lê Thanh Thảo; Trần Hoàng Hà | 48h | 1,200 |
| 40 | 5.3.5 | Kiểm thử lại mã đã sửa đổi |  | 2d | 2023-05-31 | 2023-06-02 | 39 | 18.12d | 0d | Lê Thanh Thảo; Trần Hoàng Hà | 32h | 800 |
| 41 | 5.3.6 | Kiểm thử đơn vị hoàn thành | milestone | 0d | 2023-06-02 | 2023-06-02 | 40 | 18.12d | 0d |  |  |  |
| 42 | 5.4 | **Kiểm thử tích hợp** |  | 12d | 2023-06-02 | 2023-06-20 |  | 18.12d |  |  | 192h | 4,800 |
| 43 | 5.4.1 | Kiểm thử tích hợp mô-đun |  | 5d | 2023-06-02 | 2023-06-09 | 41 | 18.12d | 0d | Dương Nhật Nam; Nguyễn Thành Tuấn | 80h | 2,000 |
| 44 | 5.4.2 | Xác định các điểm bất thường đối với đặc tả |  | 2d | 2023-06-09 | 2023-06-13 | 43 | 18.12d | 0d | Dương Nhật Nam; Nguyễn Thành Tuấn | 32h | 800 |
| 45 | 5.4.3 | Sửa đổi mã nguồn |  | 3d | 2023-06-13 | 2023-06-16 | 44 | 18.12d | 0d | Dương Nhật Nam; Nguyễn Thành Tuấn | 48h | 1,200 |
| 46 | 5.4.4 | Kiểm thử lại mã đã sửa đổi |  | 2d | 2023-06-16 | 2023-06-20 | 45 | 18.12d | 0d | Dương Nhật Nam; Nguyễn Thành Tuấn | 32h | 800 |
| 47 | 5.4.5 | Kiểm thử tích hợp hoàn thành | milestone | 0d | 2023-06-20 | 2023-06-20 | 46 | 18.12d |  |  |  |  |
| 48 | 6 | **Tập huấn** |  | 45.75d | 2023-04-12 | 2023-06-15 |  | 21.12d |  |  | 640h | 19,200 |
| 49 | 6.1 | Phát triển đặc tả tập huấn cho người dùng cuối |  | 3d | 2023-04-12 | 2023-04-17 | 24 | 39.88d | 18.75d | Phạm Minh Phương | 24h | 720 |
| 50 | 6.2 | Xây dựng đặc tả tập huấn cho nhân viên hỗ trợ của bộ phận trợ giúp |  | 3d | 2023-04-12 | 2023-04-17 | 24 | 39.88d | 18.75d | Trương Thành Nhân | 24h | 720 |
| 51 | 6.3 | Xác định phương pháp tập huấn (tập huấn dựa trên máy tính, lớp học, v.v.) |  | 2d | 2023-04-12 | 2023-04-14 | 24 | 40.88d | 19.75d | Mai Diễm Trinh | 16h | 480 |
| 52 | 6.4 | Xây dựng tài liệu tập huấn |  | 3w | 2023-05-12 | 2023-06-02 | 49, 31, 50, 51 | 21.12d | 0d | Mai Diễm Trinh; Phạm Minh Phương; Trương Thành Nhân | 360h | 10,800 |
| 53 | 6.5 | Tập huấn thực hiện nghiên cứu về khả năng sử dụng |  | 4d | 2023-06-02 | 2023-06-08 | 52 | 21.12d | 0d | Mai Diễm Trinh; Phạm Minh Phương; Trương Thành Nhân | 96h | 2,880 |
| 54 | 6.6 | Hoàn thiện tài liệu tập huấn |  | 3d | 2023-06-08 | 2023-06-13 | 53 | 21.12d | 0d | Mai Diễm Trinh; Phạm Minh Phương; Trương Thành Nhân | 72h | 2,160 |
| 55 | 6.7 | Xây dựng cơ chế phân phối tập huấn |  | 2d | 2023-06-13 | 2023-06-15 | 54 | 21.12d | 0d | Mai Diễm Trinh; Phạm Minh Phương; Trương Thành Nhân | 48h | 1,440 |
| 56 | 6.8 | Tài liệu tập huấn hoàn thành | milestone | 0d | 2023-06-15 | 2023-06-15 | 55 | 21.12d |  |  |  |  |

| ID | WBS | Task | Type | Duration | Start | Finish | Predecessors | Complete | Remaining | Total slack | Free slack | Resources | Work | Actual work | Cost | Actual cost |
| --- | --- | --- | --- | --- | --- | --- | --- | --- | --- | --- | --- | --- | --- | --- | --- | --- |
| 57 | 7 | **Tài liệu** |  | 66.88d | 2023-04-12 | 2023-07-14 |  |  |  | 0d |  |  | 694h |  | 17,350 |  |
| 58 | 7.1 | Phát triển đặc tả Trợ giúp |  | 1d | 2023-04-12 | 2023-04-13 | 24 |  |  | 45.88d | 9.5d | Phan Minh Nhật | 8h |  | 200 |  |
| 59 | 7.2 | Phát triển hệ thống Trợ giúp |  | 3w | 2023-04-26 | 2023-05-18 | 58, 29FS-7.5d |  |  | 36.38d | 0d | Lương Thùy Trang; Phan Minh Nhật | 240h |  | 6,000 |  |
| 60 | 7.3 | Xem lại tài liệu Trợ giúp |  | 3d | 2023-05-18 | 2023-05-23 | 59 |  |  | 36.38d | 0d | Lương Thùy Trang; Trần Công Minh | 48h |  | 1,200 |  |
| 61 | 7.4 | Kết hợp phản hồi tài liệu Trợ giúp |  | 2d | 2023-05-23 | 2023-05-25 | 60 |  |  | 36.38d |  | Lương Thùy Trang; Trần Công Minh | 32h |  | 800 |  |
| 62 | 7.5 | Phát triển đặc tả hướng dẫn sử dụng |  | 2d | 2023-04-12 | 2023-04-14 | 24 |  |  | 8.5d |  | Nguyễn Chí Hiếu; Nguyễn Thanh Hoài | 32h |  | 800 |  |
| 63 | 7.6 | Phát triển hướng dẫn sử dụng |  | 3w | 2023-04-26 | 2023-05-18 | 62, 29FS-7.5d |  |  | 0d |  | Nguyễn Chí Hiếu; Nguyễn Thanh Hoài | 240h |  | 6,000 |  |
| 64 | 7.7 | Xem lại tất cả tài liệu người dùng |  | 2d | 2023-05-18 | 2023-05-22 | 63 |  |  | 0d |  | Nguyễn Thanh Hoài; Phan Minh Nhật | 32h |  | 800 |  |
| 65 | 7.8 | Kết hợp phản hồi tài liệu người dùng |  | 3.88d | 2023-05-22 | 2023-07-14 | 64 |  |  | 0d |  | Nguyễn Thanh Hoài; Phan Minh Nhật | 62h |  | 1,550 |  |
| 66 | 7.9 | Tài liệu hoàn thành | milestone | 0d | 2023-07-14 | 2023-07-14 | 65, 61 |  |  | 0d |  |  |  |  |  |  |
| 67 | 8 | **Thử nghiệm** |  | 88.38d | 2023-03-22 A | 2023-07-25 |  | 13% | 76.59d | 0d |  |  | 240h | 9.6h | 6,720 | 368 |
| 68 | 8.1 | Xác định nhóm kiểm thử |  | 1d | 2023-03-22 A | 2023-03-23 A | 16 | 100% |  |  |  | Nguyễn Văn An | 8h | 8h | 320 | 320 |
| 69 | 8.2 | Phát triển cơ chế phân phối phần mềm |  | 1d | 2023-03-23 A | 2023-03-24 | 68 | 20% | 0.8d | 79.38d |  | Trương Minh Hảo | 8h | 1.6h | 240 | 48 |
| 70 | 8.3 | Cài đặt / triển khai phần mềm |  | 1d | 2023-07-17 | 2023-07-17 | 47, 69, 66, 56 |  |  | 0d |  | Phạm Minh Phương; Phan Minh Nhật; Trần Hoàng Khải; Trương Minh Hảo | 32h |  | 880 |  |
| 71 | 8.4 | Nhận phản hồi của người dùng |  | 1w | 2023-07-18 | 2023-07-24 | 70 |  |  | 0d |  | Phạm Minh Phương; Phan Minh Nhật; Trần Hoàng Khải; Trương Minh Hảo | 160h |  | 4,400 |  |
| 72 | 8.5 | Đánh giá thông tin kiểm thử |  | 1d | 2023-07-25 | 2023-07-25 | 71 |  |  | 0d |  | Phạm Minh Phương; Phan Minh Nhật; Trần Hoàng Khải; Trương Minh Hảo | 32h |  | 880 |  |
| 73 | 8.6 | Việc thử nghiệm hoàn thành | milestone | 0d | 2023-07-25 | 2023-07-25 | 72 |  |  | 0d |  |  |  |  |  |  |
| 74 | 9 | **Triển khai** |  | 5d | 2023-07-26 | 2023-08-01 |  |  |  | 0d |  |  | 80h |  | 2,280 |  |
| 75 | 9.1 | Xác định chiến lược triển khai cuối cùng |  | 1d | 2023-07-26 | 2023-07-26 | 73 |  |  | 0d |  | Phạm Minh Phương; Trần Hoàng Khải | 16h |  | 440 |  |
| 76 | 9.2 | Phát triển phương pháp triển khai |  | 1d | 2023-07-27 | 2023-07-27 | 75 |  |  | 0d |  | Phạm Minh Phương; Trần Hoàng Khải | 16h |  | 440 |  |
| 77 | 9.3 | Bảo đảm tài nguyên triển khai |  | 1d | 2023-07-28 | 2023-07-28 | 76 |  |  | 0d |  | Phạm Minh Phương; Trần Hoàng Khải | 16h |  | 440 |  |
| 78 | 9.4 | Tập huấn nhân viên hỗ trợ |  | 1d | 2023-07-31 | 2023-07-31 | 77 |  |  | 0d |  | Mai Diễm Trinh; Trương Thành Nhân | 16h |  | 480 |  |
| 79 | 9.5 | Triển khai phần mềm |  | 1d | 2023-08-01 | 2023-08-01 | 78 |  |  | 0d |  | Mai Diễm Trinh; Trương Thành Nhân | 16h |  | 480 |  |
| 80 | 9.6 | Việc triển khai hoàn thành | milestone | 0d | 2023-08-01 | 2023-08-01 | 79 |  |  | 0d |  |  |  |  |  |  |

| ID | WBS | Task | Type | Duration | Start | Finish | Predecessors | Total slack | Resources | Work | Cost |
| --- | --- | --- | --- | --- | --- | --- | --- | --- | --- | --- | --- |
| 81 | 10 | **Đánh giá sau triển khai** |  | 3d | 2023-08-02 | 2023-08-04 |  | 0d |  | 24h | 960 |
| 82 | 10.1 | Ghi lại những bài học kinh nghiệm |  | 1d | 2023-08-02 | 2023-08-02 | 80 | 0d | Nguyễn Văn An | 8h | 320 |
| 83 | 10.2 | Phân phối cho các thành viên trong nhóm |  | 1d | 2023-08-03 | 2023-08-03 | 82 | 0d | Nguyễn Văn An | 8h | 320 |
| 84 | 10.3 | Tạo nhóm bảo trì phần mềm |  | 1d | 2023-08-04 | 2023-08-04 | 83 | 0d | Nguyễn Văn An | 8h | 320 |
| 85 | 10.4 | Đánh giá sau triển khai hoàn thành | milestone | 0d | 2023-08-04 | 2023-08-04 | 84 | 0d |  |  |  |
| 86 | 11 | Mẫu phát triển phần mềm hoàn thành | milestone | 0d | 2023-08-04 | 2023-08-04 | 85 | 0d |  |  |  |
